# 1150080127_LAB53_Tracking

Schedule from MS Project, 2022-11-01 to 2022-12-02, costs in $, A marks actual dates.

## Calendars

- Standard: Mon-Fri 08:00-12:00, 13:00-17:00; Sat-Sun off. Exceptions (off unless hours are given): 2022-11-14 (Ngày hội toàn công ty).

## Resources

| Resource | Group | Rate |
| --- | --- | --- |
| Ngô Trọng Phúc | Lập trình viên | 30 |
| Nguyễn Chí Cường | Lập trình viên | 35 |
| Phạm Hồng Hạnh | Lập trình viên | 30 |
| Lâm Thị Kim Yến | Kiểm thử viên | 25 |
| Phan Thành Đạt | Kiểm thử viên | 30 |
| Trần Phạm Thiên Ân | Kiểm thử viên | 25 |
| Huỳnh Mai Lê | Kiểm thử viên | 20 |
| Mai Lệ Quyên | Khách | 30 |

## Schedule

| ID | WBS | Task | Type | Duration | Start | Finish | Predecessors | Complete | Remaining | Baseline start | Baseline finish | Baseline duration | Total slack | Resources | Work | Actual work | Cost | Baseline cost | Actual cost |
| --- | --- | --- | --- | --- | --- | --- | --- | --- | --- | --- | --- | --- | --- | --- | --- | --- | --- | --- | --- |
| 1 | 1 | **1150080127_DX_MY** |  | 23d | 2022-11-01 A | 2022-12-02 |  | 26% | 17.08d | 2022-11-01 | 2022-12-02 | 23d | 0d |  | 596h | 144h | 16,240 | 18,320 | 4,640 |
| 2 | 1.1 | **Kiểm thử đơn vị** |  | 15.5d | 2022-11-01 A | 2022-11-23 |  | 41% | 9.19d | 2022-11-01 | 2022-11-23 | 15.5d | 0d |  | 432h | 144h | 12,000 | 14,080 | 4,640 |
| 3 | 1.1.1 | Kiểm thử đơn vị |  | 10d | 2022-11-01 A | 2022-11-15 |  | 73% | 2.67d | 2022-11-01 | 2022-11-10 | 8d | 0d | Ngô Trọng Phúc; Nguyễn Chí Cường; Phạm Hồng Hạnh | 176h | 144h | 5,600 | 6,080 | 4,640 |
| 4 | 1.1.2 | Kiểm thử tích hợp |  | 8d | 2022-11-10 | 2022-11-23 | 3FS-20h |  |  | 2022-11-08 | 2022-11-23 | 10d | 0d | Lâm Thị Kim Yến; Phan Thành Đạt; Trần Phạm Thiên Ân; Huỳnh Mai Lê | 256h |  | 6,400 | 8,000 |  |
| 5 | 1.2 | **Kiểm thử hệ thống** |  | 7.5d | 2022-11-23 | 2022-12-02 |  |  |  | 2022-11-23 | 2022-12-02 | 7.5d | 0d |  | 164h |  | 4,240 | 4,240 |  |
| 6 | 1.2.1 | Kiểm thử chức năng |  | 5d | 2022-11-23 | 2022-11-30 | 4 |  |  | 2022-11-23 | 2022-11-30 | 5d | 0d | Huỳnh Mai Lê; Phan Thành Đạt | 80h |  | 2,000 | 2,000 |  |
| 7 | 1.2.2 | Kiểm thử hiệu suất |  | 3d | 2022-11-23 | 2022-11-28 | 4 |  |  | 2022-11-23 | 2022-11-28 | 3d | 2d | Lâm Thị Kim Yến; Trần Phạm Thiên Ân | 48h |  | 1,200 | 1,200 |  |
| 8 | 1.2.3 | Kiểm thử chấp nhận |  | 1.5d | 2022-11-30 | 2022-12-01 | 6, 7 |  |  | 2022-11-30 | 2022-12-01 | 1.5d | 0d | Mai Lệ Quyên | 12h |  | 360 | 360 |  |
| 9 | 1.2.4 | Kiểm thử cài đặt |  | 1d | 2022-12-02 | 2022-12-02 | 8 |  |  | 2022-12-02 | 2022-12-02 | 1d | 0d | Lâm Thị Kim Yến; Mai Lệ Quyên; Phan Thành Đạt | 24h |  | 680 | 680 |  |
| 10 | 1.3 | Hệ thống sẵn sàng cho sử dụng | milestone | 0d | 2022-12-02 | 2022-12-02 | 9 |  |  | 2022-12-02 | 2022-12-02 | 0d | 0d |  |  |  |  |  |  |
