# Lịch ra mắt sách mới

Schedule from MS Project, 2015-01-05 to 2015-02-26, status date 2015-01-14, costs in $, A marks actual dates.
New book launch schedule
Lucerne Publishing
New children's book for spring release

## Calendars

- Standard: Mon-Fri 08:00-12:00, 13:00-17:00; Sat-Sun off. Exceptions (off unless hours are given): 2015-01-22 (Staff at morale event).

## Resources

| Resource | Rate | Notes |
| --- | --- | --- |
| Jun Cao | 42 |  |
| Sharon Salavaria | 27.5 | Sharons standard pay rate is adjusted for her half-time work schedule. |
| Toby Nixon | 67.5 | Toby worked on launch campaigns for Toni Poes previous two books. |
| Toni Poe |  |  |
| Zac Woodall | 55 |  |
| Copyeditors | 45 |  |
| Travel |  |  |
| Thành Việt | 52.5 |  |
| Dan Jump | 75.5 |  |
| Hany Morcos | 38.75 |  |
| Jane Dow | 55 |  |
| John Evans | 69.5 |  |
| Katie Jordan | 48 |  |
| Luis Sousa | 70 |  |
| Printing Service |  |  |
| Robin Wood | 44 |  |
| Vikas Jain | 22 |  |
| William Flash |  |  |
| Dương Nguyên |  |  |
| Cong Đạt |  |  |
| Thiên Ân |  |  |
| Chí Chương |  |  |
| Anh Kiệt |  |  |
| Trí Anh |  |  |
| Trọng Dũng |  |  |
| Minh Hoàng |  |  |
| Trường Tam |  |  |
| Ngọc Minh |  |  |
| Anh Khôi |  |  |
| Traần Đức |  |  |
| Minh Khoa |  |  |
| Trọng Nhân |  |  |

## Schedule

| ID | WBS | Task | Type | Duration | Start | Finish | Predecessors | Complete | Remaining | Total slack | Free slack | Resources | Work | Actual work | Cost | Actual cost |
| --- | --- | --- | --- | --- | --- | --- | --- | --- | --- | --- | --- | --- | --- | --- | --- | --- |
| 1 | 1 | **Giiai đoạn lập kế hoạch** |  | 11d | 2015-01-05 A | 2015-01-19 A |  | 100% |  |  |  |  | 248h | 248h | 420 | 420 |
| 2 | 1.1 | Phân công thành viên nhóm ra mắt |  | 1d | 2015-01-05 A | 2015-01-05 A |  | 100% |  |  |  | Thành Việt | 8h | 8h | 420 | 420 |
| 3 | 1.2 | Hoàn thành câu hỏi cho tác giả |  | 1w | 2015-01-06 A | 2015-01-12 A | 2 | 100% |  |  |  | Dương Nguyên | 40h | 40h |  |  |
| 4 | 1.3 | Sắp xếp phỏng vấn nhà văn |  | 1w | 2015-01-06 A | 2015-01-12 A | 2 | 100% |  |  |  | Cong Đạt | 40h | 40h |  |  |
| 5 | 1.4 | Thiết kế và đặt hàng tài liệu tiếp thị |  | 2w | 2015-01-06 A | 2015-01-19 A | 2 | 100% |  |  |  | Thiên Ân; Chí Chương | 160h | 160h |  |  |
| 6 | 1.5 | Hoàn tất giai đoạn lập kế hoạch | milestone | 0d | 2015-01-19 A | 2015-01-19 A | 5 | 100% |  |  |  |  |  |  |  |  |
| 7 | 2 | **Giai đoạn ra mắt nội bộ** |  | 15d | 2015-01-20 A | 2015-02-10 | 1 | 67% | 5d | 0d |  |  | 332h | 204h | 1,260 | 1,260 |
| 8 | 2.1 | Họp khởi động ra mắt sách |  | 1d | 2015-01-20 A | 2015-01-20 A |  | 100% |  |  |  | Anh Kiệt [50%]; Trí Anh | 12h | 12h |  |  |
| 9 | 2.2 | Chuẩn bị báo cáo P&L của sách |  | 3d | 2015-01-21 A | 2015-01-26 A | 8 | 100% |  |  |  | Thành Việt | 24h | 24h | 1,260 | 1,260 |
| 10 | 2.3 | Lên lịch trình chuyến đi cho tác giả |  | 7d | 2015-01-20 A | 2015-01-29 A | 8 | 100% |  |  |  | Trọng Dũng | 56h | 56h |  |  |
| 11 | 2.4 | Chuẩn bị kênh bán hàng |  | 7d | 2015-01-21 A | 2015-01-30 A | 8 | 100% |  |  |  | Minh Hoàng; Trường Tam | 112h | 112h |  |  |
| 12 | 2.5 | Hoàn thành biểu mẫu ra mắt sách |  | 2d | 2015-02-02 | 2015-02-03 | 11 |  |  | 5d |  | Ngọc Minh; Anh Khôi | 32h |  |  |  |
| 13 | 2.6 | Chuẩn bị bộ dụng cụ bán sách |  | 1w | 2015-02-02 | 2015-02-06 | 8, 11 |  |  | 0d |  | Traần Đức; Minh Khoa | 80h |  |  |  |
| 14 | 2.7 | Phân phối vật liệu bán hàng |  | 2d | 2015-02-09 | 2015-02-10 | 13 |  |  | 0d |  | Traần Đức | 16h |  |  |  |
| 15 | 3 | **Giai đoạn giới thiệu công chúng** |  | 12d | 2015-02-11 | 2015-02-26 | 7 |  |  | 0d |  |  | 280h |  | 13,352 |  |
| 16 | 3.1 | **Lịch trình di chuyển và xuất hiện của tác giả** |  | 2d | 2015-02-11 | 2015-02-12 |  |  |  | 10d |  |  | 16h |  | 800 |  |
| 17 | 3.1.1 | Phỏng vấn tác giả qua radio |  | 1d | 2015-02-11 | 2015-02-11 |  |  |  | 10d | 0d | Trọng Nhân | 8h |  |  |  |
| 18 | 3.1.2 | Tác giả đọc và kí tặng sách |  | 1d | 2015-02-12 | 2015-02-12 | 17 |  |  | 10d |  | Toni Poe; Travel [0.1%] | 8h |  | 800 |  |
| 19 | 3.2 | Phân phát bản sao |  | 2d | 2015-02-11 | 2015-02-12 |  |  |  | 10d |  | Toby Nixon; Vikas Jain | 32h |  | 1,432 |  |
| 20 | 3.3 | Phân phát bộ công cụ bán sách |  | 2d | 2015-02-11 | 2015-02-12 |  |  |  | 0d |  | Zac Woodall | 16h |  | 880 |  |
| 21 | 3.4 | Phối hợp các bài viết chuyên đề trên tạp chí |  | 7d | 2015-02-13 | 2015-02-23 | 20 |  |  | 3d |  | Zac Woodall | 56h |  | 3,080 |  |
| 22 | 3.5 | Mở cổng web công cộng |  | 1w | 2015-02-13 | 2015-02-19 | 20 |  |  | 0d |  | Toby Nixon; Vikas Jain | 80h |  | 3,580 |  |
| 23 | 3.6 | Chạy chương trình bán sách trên các nền tảng xã hội |  | 1w | 2015-02-20 | 2015-02-26 | 22 |  |  | 0d |  | Toby Nixon; Vikas Jain | 80h |  | 3,580 |  |
| 24 | 3.7 | Giai đoạn chạy chương trình hoàn tất | milestone | 0d | 2015-02-26 | 2015-02-26 | 21, 22, 23 |  |  | 0d |  |  |  |  |  |  |

Notes:
- 19: Get recipient list from publicist
